# ProjekatRazvojaEnergetskogČokoladnogMleka

Schedule from MS Project, 2026-01-20 to 2027-01-21, costs in RSD.
Projekat razvoja energetskog čokoladnog mleka
Imlek

## Calendars

- Standard: Mon-Fri 08:00-12:00, 13:00-17:00; Sat-Sun off. Exceptions (off unless hours are given): 2026-05-01 (Dan rada), 2026-11-11 (Dan primirja u prvom svetskom ratu), 2027-01-01 (Nova godina), 2027-01-07 (Božić).

## Resources

| Resource | Group | Rate |
| --- | --- | --- |
| Istraživač tržišta | Istraživanje tržišta I potrošača | 1000 |
| Analitičar tržišta | Istraživanje tržišta I potrošača | 1000 |
| Specijalista za istraživanje potrošača | Istraživanje tržišta I potrošača | 1500 |
| Data analitičar | Istraživanje tržišta I potrošača | 2000 |
| Product manager | Definisanje tržišne pozicije proizvoda | 2500 |
| Brand manager | Definisanje tržišne pozicije proizvoda | 1500 |
| Tehnolog hrane | Definisanje tržišne pozicije proizvoda | 1500 |
| Specijalista za energetsku vrednost I sastojke | Definisanje tržišne pozicije proizvoda | 1350 |
| Laboratorijski tehničar | Razvoj recepture | 1200 |
| Quality Assurance specijalista | Razvoj recepture | 1500 |
| Mikrobiolog | Testiranja i ispitivanja | 1350 |
| Grafički dizajner | Dizajn ambalaže | 1500 |
| Industrijski dizajner ambalaže | Dizajn ambalaže | 1500 |
| Project manager | Upravljanje projektom | 3000 |
| Koordinator tima | Upravljanje projektom | 2000 |
| Kakao prah 1kg |  | 10000 |
| Trošak HACCP Sertifikacije |  |  |
| Ambalaže I etikete |  | 20 |

## Schedule

| ID | WBS | Task | Type | Duration | Start | Finish | Predecessors | Baseline start | Baseline finish | Baseline duration | Total slack | Resources | Work | Cost | Baseline cost |
| --- | --- | --- | --- | --- | --- | --- | --- | --- | --- | --- | --- | --- | --- | --- | --- |
| 1 | 1 | **Istraživanje tržišta I potrošača** |  | 38d | 2026-01-20 | 2026-03-12 |  | 2026-01-20 | 2026-03-12 | 38d | 0d |  | 280h | 404,000 | 404,000 |
| 2 | 1.1 | Analiza potreba ciljnih grupa |  | 8d | 2026-01-20 | 2026-01-29 |  | 2026-01-20 | 2026-01-29 | 8d | 0d | Istraživač tržišta | 64h | 64,000 | 64,000 |
| 3 | 1.2 | Istraživanje potrošačkih navika i percepcije „energetskih“ napitaka |  | 15d | 2026-01-30 | 2026-02-19 | 2 | 2026-01-30 | 2026-02-19 | 15d | 0d | Specijalista za istraživanje potrošača | 120h | 180,000 | 180,000 |
| 4 | 1.3 | Analiza konkurentskih proizvoda |  | 8d | 2026-02-25 | 2026-03-06 | 3FS+3d | 2026-02-25 | 2026-03-06 | 8d | 0d | Data analitičar | 64h | 128,000 | 128,000 |
| 5 | 1.4 | Analiza trendova u industriji |  | 4d | 2026-03-09 | 2026-03-12 | 4 | 2026-03-09 | 2026-03-12 | 4d | 0d | Analitičar tržišta | 32h | 32,000 | 32,000 |
| 6 | 2 | **Definisanje tržišne pozicije proizvoda** |  | 94d | 2026-03-13 | 2026-07-23 |  | 2026-03-13 | 2026-07-23 | 94d |  |  | 704h | 981,600 | 981,600 |
| 7 | 2.1 | Određivanje funkcionalne koristi |  | 40d | 2026-03-13 | 2026-05-08 | 5 | 2026-03-13 | 2026-05-08 | 40d | 0d | Specijalista za energetsku vrednost I sastojke | 320h | 432,000 | 432,000 |
| 8 | 2.2 | Izbor izvora energije |  | 22d | 2026-05-11 | 2026-06-09 | 7 | 2026-05-11 | 2026-06-09 | 22d | 0d | Specijalista za energetsku vrednost I sastojke | 176h | 237,600 | 237,600 |
| 9 | 2.3 | Definisanje nutritivnih i zdravstvenih tvrdnji |  | 13d | 2026-06-10 | 2026-06-26 | 8 | 2026-06-10 | 2026-06-26 | 13d | 0d | Tehnolog hrane | 104h | 156,000 | 156,000 |
| 10 | 2.4 | Razrada ciljnog ukusa i teksture |  | 13d | 2026-06-29 | 2026-07-15 | 9 | 2026-06-29 | 2026-07-15 | 13d | 0d | Tehnolog hrane | 104h | 156,000 | 156,000 |
| 11 | 3 | **Razvoj recepture** |  | 95d | 2026-07-16 | 2026-11-26 |  | 2026-07-16 | 2026-11-26 | 95d |  |  | 736h | 984,400 | 984,400 |
| 12 | 3.1 | Odabir baze |  | 21d | 2026-07-16 | 2026-08-13 | 10 | 2026-07-16 | 2026-08-13 | 21d | 0d | Laboratorijski tehničar | 168h | 201,600 | 201,600 |
| 13 | 3.2 | Izbor kakaa |  | 33d | 2026-08-14 | 2026-09-29 | 12 | 2026-08-14 | 2026-09-29 | 33d | 0d | Laboratorijski tehničar; Kakao prah 1kg | 264h | 326,800 | 326,800 |
| 14 | 3.3 | Dodavanje izvora energije |  | 28d | 2026-09-30 | 2026-11-06 | 13 | 2026-09-30 | 2026-11-06 | 28d | 0d | Tehnolog hrane | 224h | 336,000 | 336,000 |
| 15 | 3.4 | Optimizacija ukusa i teksture |  | 10d | 2026-11-09 | 2026-11-23 | 14 | 2026-11-09 | 2026-11-23 | 10d | 0d | Tehnolog hrane | 80h | 120,000 | 120,000 |
| 16 | 4 | **Testiranja i ispitivanja** |  | 10d | 2026-11-24 | 2026-12-07 |  | 2026-11-24 | 2026-12-07 | 10d |  |  | 72h | 100,800 | 100,800 |
| 17 | 4.1 | Mikrobiološka ispitivanja |  | 2d | 2026-11-24 | 2026-11-25 | 15 | 2026-11-24 | 2026-11-25 | 2d | 0d | Mikrobiolog | 16h | 21,600 | 21,600 |
| 18 | 4.2 | Provera alergena |  | 2d | 2026-11-26 | 2026-11-27 | 17 | 2026-11-26 | 2026-11-27 | 2d | 0d | Laboratorijski tehničar | 16h | 19,200 | 19,200 |
| 19 | 4.3 | Usklađenost sa HACCP i zakonskim propisima |  | 5d | 2026-11-30 | 2026-12-04 | 18 | 2026-11-30 | 2026-12-04 | 5d | 0d | Brand manager | 40h | 60,000 | 60,000 |
| 20 | 4.4 | Potpisivanje HACCP ugovora | milestone | 0d | 2026-12-04 | 2026-12-04 | 19FF | 2026-12-04 | 2026-12-04 | 0d | 0d |  |  |  |  |
| 21 | 5 | **Dizajn ambalaže** |  | 20d | 2026-12-05 | 2026-12-31 |  | 2026-12-05 | 2026-12-31 | 20d |  |  | 136h | 204,020 | 204,020 |
| 22 | 5.1 | Izbor praktične ambalaže |  | 4d | 2026-12-07 | 2026-12-10 | 20 | 2026-12-07 | 2026-12-10 | 4d | 0d | Industrijski dizajner ambalaže; Ambalaže I etikete | 32h | 48,020 | 48,020 |
| 23 | 5.2 | Razvoj vizuelnog identiteta |  | 8d | 2026-12-11 | 2026-12-22 | 22 | 2026-12-11 | 2026-12-22 | 8d | 0d | Grafički dizajner | 64h | 96,000 | 96,000 |
| 24 | 5.3 | Jasno isticanje energetskih i nutritivnih benefita |  | 5d | 2026-12-23 | 2026-12-29 | 23 | 2026-12-23 | 2026-12-29 | 5d | 0d | Brand manager | 40h | 60,000 | 60,000 |
| 25 | 6 | Testiranje kod potrošača |  | 6d | 2026-12-30 | 2027-01-08 | 24 | 2026-12-30 | 2027-01-08 | 6d | 0d | Quality Assurance specijalista | 48h | 72,000 | 72,000 |
| 26 | 7 | Marketing i pozicioniranje |  | 4d | 2027-01-11 | 2027-01-14 | 25 | 2027-01-11 | 2027-01-14 | 4d | 0d | Brand manager | 32h | 48,000 | 48,000 |
| 27 | 8 | Lansiranje i praćenje |  | 5d | 2027-01-15 | 2027-01-21 | 26 | 2027-01-15 | 2027-01-21 | 5d | 0d | Product manager | 40h | 100,000 | 100,000 |

| ID | WBS | Task | Duration | Start | Finish | Baseline start | Baseline finish | Baseline duration | Total slack | Constraint | Resources | Work | Cost | Baseline cost |
| --- | --- | --- | --- | --- | --- | --- | --- | --- | --- | --- | --- | --- | --- | --- |
| 28 | 9 | **Sastanci u vezi napretka projekta** | 258d | 2026-01-20 | 2027-01-20 | 2026-01-20 | 2027-01-20 | 258d | 1d |  | Koordinator tima | 2064h | 4,128,000 | 4,128,000 |
| 29 | 9.1 | Sastanci u vezi napretka projekta 1 | 1d | 2026-01-20 | 2026-01-20 | 2026-01-20 | 2026-01-20 | 1d | 258d | start no earlier than 2026-01-20 |  |  |  |  |
| 30 | 9.2 | Sastanci u vezi napretka projekta 2 | 1d | 2026-02-20 | 2026-02-20 | 2026-02-20 | 2026-02-20 | 1d | 235d | start no earlier than 2026-02-20 |  |  |  |  |
| 31 | 9.3 | Sastanci u vezi napretka projekta 3 | 1d | 2026-03-20 | 2026-03-20 | 2026-03-20 | 2026-03-20 | 1d | 215d | start no earlier than 2026-03-20 |  |  |  |  |
| 32 | 9.4 | Sastanci u vezi napretka projekta 4 | 1d | 2026-04-20 | 2026-04-20 | 2026-04-20 | 2026-04-20 | 1d | 194d | start no earlier than 2026-04-20 |  |  |  |  |
| 33 | 9.5 | Sastanci u vezi napretka projekta 5 | 1d | 2026-05-20 | 2026-05-20 | 2026-05-20 | 2026-05-20 | 1d | 173d | start no earlier than 2026-05-20 |  |  |  |  |
| 34 | 9.6 | Sastanci u vezi napretka projekta 6 | 1d | 2026-06-22 | 2026-06-22 | 2026-06-22 | 2026-06-22 | 1d | 150d | start no earlier than 2026-06-20 |  |  |  |  |
| 35 | 9.7 | Sastanci u vezi napretka projekta 7 | 1d | 2026-07-20 | 2026-07-20 | 2026-07-20 | 2026-07-20 | 1d | 130d | start no earlier than 2026-07-20 |  |  |  |  |
| 36 | 9.8 | Sastanci u vezi napretka projekta 8 | 1d | 2026-08-20 | 2026-08-20 | 2026-08-20 | 2026-08-20 | 1d | 107d | start no earlier than 2026-08-20 |  |  |  |  |
| 37 | 9.9 | Sastanci u vezi napretka projekta 9 | 1d | 2026-09-21 | 2026-09-21 | 2026-09-21 | 2026-09-21 | 1d | 85d | start no earlier than 2026-09-20 |  |  |  |  |
| 38 | 9.10 | Sastanci u vezi napretka projekta 10 | 1d | 2026-10-20 | 2026-10-20 | 2026-10-20 | 2026-10-20 | 1d | 64d | start no earlier than 2026-10-20 |  |  |  |  |
| 39 | 9.11 | Sastanci u vezi napretka projekta 11 | 1d | 2026-11-20 | 2026-11-20 | 2026-11-20 | 2026-11-20 | 1d | 42d | start no earlier than 2026-11-20 |  |  |  |  |
| 40 | 9.12 | Sastanci u vezi napretka projekta 12 | 1d | 2026-12-21 | 2026-12-21 | 2026-12-21 | 2026-12-21 | 1d | 21d | start no earlier than 2026-12-20 |  |  |  |  |
| 41 | 9.13 | Sastanci u vezi napretka projekta 13 | 1d | 2027-01-20 | 2027-01-20 | 2027-01-20 | 2027-01-20 | 1d | 1d | start no earlier than 2027-01-20 |  |  |  |  |
